# TU Cog

How a schedule from GanttProject changed from version to version. A marks actual dates.

## Version 1 (saved 2013-09-26)

Note of the change: Crated TU Instinctive man-days diagram

| ID | WBS | Task | Duration | Start | Finish | Predecessors |
| --- | --- | --- | --- | --- | --- | --- |
| 1 |  | Start project | 0d | 2014-01-15 | 2014-01-15 |  |
| 2 | 2 | **Preliminary development** | 42d | 2014-01-15 | 2014-03-13 | 1 |
| 3 |  | Version 1.0 bugs | 15d | 2014-01-15 | 2014-02-04 |  |
| 4 |  | Version 1.0 improvements | 14d | 2014-02-05 | 2014-02-24 | 3 |
| 5 |  | Version 1.0 Fixes | 0d | 2014-02-25 | 2014-02-25 | 3, 4 |
| 6 |  | Test and debug | 0d | 2014-02-25 | 2014-02-25 | 5 |
| 7 |  | Refactor to get rid of KBAdapter addressing | 2d | 2014-02-25 | 2014-02-26 | 5 |
| 8 |  | Merge training and request mode | 10d | 2014-02-25 | 2014-03-10 | 5 |
| 9 |  | Test and debug | 3d | 2014-03-11 | 2014-03-13 | 8 |
| 10 |  | HowTo training | 2d | 2014-02-25 | 2014-02-26 | 5 |
| 11 |  | Test and debug | 3d | 2014-02-27 | 2014-03-03 | 10 |
| 12 | 3 | **Thinking model** | 59d | 2014-03-14 | 2014-06-04 | 2 |
| 13 |  | 6 thinking levels design | 5d | 2014-03-14 | 2014-03-20 |  |
| 14 |  | 6 thinking levels implementation | 10d | 2014-03-21 | 2014-04-03 | 13 |
| 15 |  | Test and debug | 10d | 2014-04-04 | 2014-04-17 | 14 |
| 16 |  | Integration | 10d | 2014-04-18 | 2014-05-01 | 15 |
| 17 |  | Time concept | 3d | 2014-05-02 | 2014-05-06 | 16 |
| 18 |  | Personality manager | 10d | 2014-04-18 | 2014-05-01 | 15 |
| 19 |  | Test and debug | 10d | 2014-05-02 | 2014-05-15 | 18 |
| 20 |  | Instinctive level | 3d | 2014-05-07 | 2014-05-09 | 17 |
| 21 |  | Test and debug | 1d | 2014-05-12 | 2014-05-12 | 20 |
| 22 |  | Integration | 7d | 2014-05-13 | 2014-05-21 | 21 |
| 23 |  | Test and debug | 10d | 2014-05-22 | 2014-06-04 | 22 |
| 24 |  | Thinking model end | 0d | 2014-06-05 | 2014-06-05 | 23 |
| 25 | 4 | **Analyser** | 52d | 2014-06-05 | 2014-08-15 | 12 |
| 26 |  | JNI PLN | 15d | 2014-06-05 | 2014-06-25 |  |
| 27 |  | Test and debug | 15d | 2014-06-26 | 2014-07-16 | 26 |
| 28 |  | Inductive reasoning | 7d | 2014-07-17 | 2014-07-25 | 27 |
| 29 |  | Test and debug | 3d | 2014-07-28 | 2014-07-30 | 28 |
| 30 |  | Deductive reasoning | 6d | 2014-07-17 | 2014-07-24 | 27 |
| 31 |  | Test and bebug | 3d | 2014-07-25 | 2014-07-29 | 30 |
| 32 |  | Abductive reasoning | 8d | 2014-07-17 | 2014-07-28 | 27 |
| 33 |  | Test and debug | 4d | 2014-07-29 | 2014-08-01 | 32 |
| 34 |  | Integration | 7d | 2014-08-04 | 2014-08-12 | 29, 31, 33 |
| 35 |  | Testing | 3d | 2014-08-13 | 2014-08-15 | 34 |
| 36 |  | Analyser end | 0d | 2014-08-18 | 2014-08-18 | 35 |
| 37 | 5 | **Actuator** | 45d | 2014-08-18 | 2014-10-17 | 25 |
| 38 |  | Smart actuator | 10d | 2014-08-18 | 2014-08-29 | 9 |
| 39 |  | Test and debug | 10d | 2014-09-01 | 2014-09-12 | 38 |
| 40 |  | Smart feedback analyser | 15d | 2014-09-15 | 2014-10-03 | 39 |
| 41 |  | Test and debug | 7d | 2014-10-06 | 2014-10-14 | 40 |
| 42 |  | Smart reporter | 10d | 2014-09-01 | 2014-09-12 | 38 |
| 43 |  | Test and debug | 10d | 2014-09-15 | 2014-09-26 | 42 |
| 44 |  | Testing | 15d | 2014-09-29 | 2014-10-17 | 43 |
| 45 |  | Smart actuator end | 0d | 2014-10-20 | 2014-10-20 | 44 |
| 46 | 6 | **Emotional thinking** | 110d | 2014-10-20 | 2015-03-20 | 37 |
| 47 |  | Apprisal theory analysis | 10d | 2014-10-20 | 2014-10-31 |  |
| 48 |  | Design | 20d | 2014-11-03 | 2014-11-28 | 47 |
| 49 |  | Implementation and testing | 80d | 2014-12-01 | 2015-03-20 | 48 |
| 50 | 7 | **Common sense reasoning** | 75d | 2015-03-23 | 2015-07-03 | 46 |
| 51 |  | Design | 15d | 2015-03-23 | 2015-04-10 |  |
| 52 |  | Implementation and testing | 60d | 2015-04-13 | 2015-07-03 | 51 |
| 53 |  | Knowledge base creation and training | 20d | 2015-07-06 | 2015-07-31 | 50 |
| 54 |  | TU Cog project end | 0d | 2015-08-03 | 2015-08-03 | 53 |

## Version 2 (saved 2013-09-26)

Note of the change: Updated man-days Gantts

Last finish 2015-08-03 → 2016-02-10 (+191d).

Added:

| ID | Task | Duration | Start | Finish | Predecessors |
| --- | --- | --- | --- | --- | --- |
| 2 | **TU Cog** | 540d | 2014-01-15 | 2016-02-09 |  |
| 9 | Refactor model | 10d | 2014-03-03 | 2014-03-14 | 8 |
| 54 | **Dialog extension** | 40d | 2015-10-26 | 2015-12-18 | 51 |
| 55 | Merge training and request modes | 5d | 2015-10-26 | 2015-10-30 |  |
| 56 | Design external system collaboration mode | 10d | 2015-11-02 | 2015-11-13 | 55 |
| 57 | Implement external system collaboration mode | 20d | 2015-11-16 | 2015-12-11 | 56 |
| 58 | Extend unknown phrases and concepts handling | 5d | 2015-12-14 | 2015-12-18 | 57 |
| 59 | **Time control extension** | 17d | 2015-12-21 | 2016-01-12 | 54 |
| 60 | Design time control critic | 2d | 2015-12-21 | 2015-12-22 |  |
| 61 | Implement and test time control critic | 15d | 2015-12-23 | 2016-01-12 | 60 |

Removed: 8 Merge training and request mode

Changed:

| ID | Task | Start | Finish | Duration | Predecessors | Other |
| --- | --- | --- | --- | --- | --- | --- |
| 3 | **Preliminary development** |  | 2014-03-13 → 2014-03-26 (+13d) | 42d → 51d |  |  |
| 8 | Test and debug | 2014-02-25 → 2014-02-27 (+2d) | 2014-02-25 → 2014-02-28 (+3d) | 0d → 2d | 6 → 7 |  |
| 10 | Test and debug | 2014-03-11 → 2014-03-17 (+6d) | 2014-03-13 → 2014-03-19 (+6d) |  | Merge training and request mode → 9 |  |
| 11 | HowTo training | 2014-02-25 → 2014-03-20 (+23d) | 2014-02-26 → 2014-03-21 (+23d) |  | 6 → 10 |  |
| 12 | Test and debug | 2014-02-27 → 2014-03-24 (+25d) | 2014-03-03 → 2014-03-26 (+23d) |  |  |  |
| 13 | **Thinking model** | 2014-03-14 → 2014-03-27 (+13d) | 2014-06-04 → 2014-07-15 (+41d) | 59d → 79d |  |  |
| 14 | 6 thinking levels design | 2014-03-14 → 2014-03-27 (+13d) | 2014-03-20 → 2014-04-02 (+13d) |  |  |  |
| 15 | 6 thinking levels implementation | 2014-03-21 → 2014-04-03 (+13d) | 2014-04-03 → 2014-04-16 (+13d) |  |  |  |
| 16 | Test and debug | 2014-04-04 → 2014-04-17 (+13d) | 2014-04-17 → 2014-04-30 (+13d) |  |  |  |
| 17 | Integration | 2014-04-18 → 2014-05-01 (+13d) | 2014-05-01 → 2014-05-14 (+13d) |  |  |  |
| 18 | Time concept | 2014-05-02 → 2014-05-15 (+13d) | 2014-05-06 → 2014-05-19 (+13d) |  |  |  |
| 19 | Personality manager | 2014-04-18 → 2014-05-20 (+32d) | 2014-05-01 → 2014-06-02 (+32d) |  | 16 → 18 |  |
| 20 | Test and debug | 2014-05-02 → 2014-06-03 (+32d) | 2014-05-15 → 2014-06-16 (+32d) |  |  |  |
| 21 | Instinctive level | 2014-05-07 → 2014-06-17 (+41d) | 2014-05-09 → 2014-06-19 (+41d) |  | 18 → 20 |  |
| 22 | Test and debug | 2014-05-12 → 2014-06-20 (+39d) | 2014-05-12 → 2014-06-20 (+39d) |  |  |  |
| 23 | Integration | 2014-05-13 → 2014-06-23 (+41d) | 2014-05-21 → 2014-07-01 (+41d) |  |  |  |
| 24 | Test and debug | 2014-05-22 → 2014-07-02 (+41d) | 2014-06-04 → 2014-07-15 (+41d) |  |  |  |
| 25 | Thinking model end | 2014-06-05 → 2014-07-16 (+41d) | 2014-06-05 → 2014-07-16 (+41d) |  |  |  |
| 26 | **Analyser** | 2014-06-05 → 2014-07-16 (+41d) | 2014-08-15 → 2014-10-22 (+68d) | 52d → 71d |  |  |
| 27 | JNI PLN | 2014-06-05 → 2014-07-16 (+41d) | 2014-06-25 → 2014-08-05 (+41d) |  |  |  |
| 28 | Test and debug | 2014-06-26 → 2014-08-06 (+41d) | 2014-07-16 → 2014-08-26 (+41d) |  |  |  |
| 29 | Inductive reasoning | 2014-07-17 → 2014-08-27 (+41d) | 2014-07-25 → 2014-09-04 (+41d) |  |  |  |
| 30 | Test and debug | 2014-07-28 → 2014-09-05 (+39d) | 2014-07-30 → 2014-09-09 (+41d) |  |  |  |
| 31 | Deductive reasoning | 2014-07-17 → 2014-09-10 (+55d) | 2014-07-24 → 2014-09-17 (+55d) |  | 28 → 30 |  |
| 32 | Test and bebug | 2014-07-25 → 2014-09-18 (+55d) | 2014-07-29 → 2014-09-22 (+55d) |  |  |  |
| 33 | Abductive reasoning | 2014-07-17 → 2014-09-23 (+68d) | 2014-07-28 → 2014-10-02 (+66d) |  | 28 → 32 |  |
| 34 | Test and debug | 2014-07-29 → 2014-10-03 (+66d) | 2014-08-01 → 2014-10-08 (+68d) |  |  |  |
| 35 | Integration | 2014-08-04 → 2014-10-09 (+66d) | 2014-08-12 → 2014-10-17 (+66d) |  | 30, 32, 34 → 34 |  |
| 36 | Testing | 2014-08-13 → 2014-10-20 (+68d) | 2014-08-15 → 2014-10-22 (+68d) |  |  |  |
| 37 | Analyser end | 2014-08-18 → 2014-10-23 (+66d) | 2014-08-18 → 2014-10-23 (+66d) |  |  |  |
| 38 | **Actuator** | 2014-08-18 → 2014-10-23 (+66d) | 2014-10-17 → 2015-02-06 (+112d) | 45d → 77d |  |  |
| 39 | Smart actuator | 2014-08-18 → 2014-10-23 (+66d) | 2014-08-29 → 2014-11-05 (+68d) |  |  |  |
| 40 | Test and debug | 2014-09-01 → 2014-11-06 (+66d) | 2014-09-12 → 2014-11-19 (+68d) |  |  |  |
| 41 | Smart feedback analyser | 2014-09-15 → 2014-11-20 (+66d) | 2014-10-03 → 2014-12-10 (+68d) |  |  |  |
| 42 | Test and debug | 2014-10-06 → 2014-12-11 (+66d) | 2014-10-14 → 2014-12-19 (+66d) |  |  |  |
| 43 | Smart reporter | 2014-09-01 → 2014-12-22 (+112d) | 2014-09-12 → 2015-01-02 (+112d) |  | 39 → 42 |  |
| 44 | Test and debug | 2014-09-15 → 2015-01-05 (+112d) | 2014-09-26 → 2015-01-16 (+112d) |  |  |  |
| 45 | Testing | 2014-09-29 → 2015-01-19 (+112d) | 2014-10-17 → 2015-02-06 (+112d) |  |  |  |
| 46 | Smart actuator end | 2014-10-20 → 2015-02-09 (+112d) | 2014-10-20 → 2015-02-09 (+112d) |  |  |  |
| 47 | **Emotional thinking** | 2014-10-20 → 2015-02-09 (+112d) | 2015-03-20 → 2015-07-10 (+112d) |  |  |  |
| 48 | Apprisal theory analysis | 2014-10-20 → 2015-02-09 (+112d) | 2014-10-31 → 2015-02-20 (+112d) |  |  |  |
| 49 | Design | 2014-11-03 → 2015-02-23 (+112d) | 2014-11-28 → 2015-03-20 (+112d) |  |  |  |
| 50 | Implementation and testing | 2014-12-01 → 2015-03-23 (+112d) | 2015-03-20 → 2015-07-10 (+112d) |  |  |  |
| 51 | **Common sense reasoning** | 2015-03-23 → 2015-07-13 (+112d) | 2015-07-03 → 2015-10-23 (+112d) |  |  |  |
| 52 | Design | 2015-03-23 → 2015-07-13 (+112d) | 2015-04-10 → 2015-07-31 (+112d) |  |  |  |
| 53 | Implementation and testing | 2015-04-13 → 2015-08-03 (+112d) | 2015-07-03 → 2015-10-23 (+112d) |  |  |  |
| 62 | Knowledge base creation and training | 2015-07-06 → 2016-01-13 (+191d) | 2015-07-31 → 2016-02-09 (+193d) |  | 51 → 51, 59 |  |
| 63 | TU Cog project end2 | 2015-08-03 → 2016-02-10 (+191d) | 2015-08-03 → 2016-02-10 (+191d) |  |  | was named TU Cog project end |

## Version 3 (saved 2013-09-27)

Note of the change: added knowledge to rules inferrer

Last finish 2016-02-10 → 2016-03-10 (+29d).

Added:

| ID | Task | Duration | Start | Finish | Predecessors |
| --- | --- | --- | --- | --- | --- |
| 36 | Knowledge to rules inferrer design | 4d | 2014-10-20 | 2014-10-23 | 35 |
| 37 | Knowlege to rules inferrer | 7d | 2014-10-24 | 2014-11-03 | 36 |
| 38 | Test and debug | 7d | 2014-11-04 | 2014-11-12 | 37 |
| 39 | Integration | 3d | 2014-11-13 | 2014-11-17 | 38 |

Changed:

| ID | Task | Start | Finish | Duration | Predecessors |
| --- | --- | --- | --- | --- | --- |
| 2 | **TU Cog** |  | 2016-02-09 → 2016-03-09 (+29d) | 540d → 561d |  |
| 26 | **Analyser** |  | 2014-10-22 → 2014-11-20 (+29d) | 71d → 92d |  |
| 40 | Testing | 2014-10-20 → 2014-11-18 (+29d) | 2014-10-22 → 2014-11-20 (+29d) |  | 35 → 35, 39 |
| 41 | Analyser end | 2014-10-23 → 2014-11-21 (+29d) | 2014-10-23 → 2014-11-21 (+29d) |  |  |
| 42 | **Actuator** | 2014-10-23 → 2014-11-21 (+29d) | 2015-02-06 → 2015-03-09 (+31d) |  |  |
| 43 | Smart actuator | 2014-10-23 → 2014-11-21 (+29d) | 2014-11-05 → 2014-12-04 (+29d) |  |  |
| 44 | Test and debug | 2014-11-06 → 2014-12-05 (+29d) | 2014-11-19 → 2014-12-18 (+29d) |  |  |
| 45 | Smart feedback analyser | 2014-11-20 → 2014-12-19 (+29d) | 2014-12-10 → 2015-01-08 (+29d) |  |  |
| 46 | Test and debug | 2014-12-11 → 2015-01-09 (+29d) | 2014-12-19 → 2015-01-19 (+31d) |  |  |
| 47 | Smart reporter | 2014-12-22 → 2015-01-20 (+29d) | 2015-01-02 → 2015-02-02 (+31d) |  |  |
| 48 | Test and debug | 2015-01-05 → 2015-02-03 (+29d) | 2015-01-16 → 2015-02-16 (+31d) |  |  |
| 49 | Testing | 2015-01-19 → 2015-02-17 (+29d) | 2015-02-06 → 2015-03-09 (+31d) |  |  |
| 50 | Smart actuator end | 2015-02-09 → 2015-03-10 (+29d) | 2015-02-09 → 2015-03-10 (+29d) |  |  |
| 51 | **Emotional thinking** | 2015-02-09 → 2015-03-10 (+29d) | 2015-07-10 → 2015-08-10 (+31d) |  |  |
| 52 | Apprisal theory analysis | 2015-02-09 → 2015-03-10 (+29d) | 2015-02-20 → 2015-03-23 (+31d) |  |  |
| 53 | Design | 2015-02-23 → 2015-03-24 (+29d) | 2015-03-20 → 2015-04-20 (+31d) |  |  |
| 54 | Implementation and testing | 2015-03-23 → 2015-04-21 (+29d) | 2015-07-10 → 2015-08-10 (+31d) |  |  |
| 55 | **Common sense reasoning** | 2015-07-13 → 2015-08-11 (+29d) | 2015-10-23 → 2015-11-23 (+31d) |  |  |
| 56 | Design | 2015-07-13 → 2015-08-11 (+29d) | 2015-07-31 → 2015-08-31 (+31d) |  |  |
| 57 | Implementation and testing | 2015-08-03 → 2015-09-01 (+29d) | 2015-10-23 → 2015-11-23 (+31d) |  |  |
| 58 | **Dialog extension** | 2015-10-26 → 2015-11-24 (+29d) | 2015-12-18 → 2016-01-18 (+31d) |  |  |
| 59 | Merge training and request modes | 2015-10-26 → 2015-11-24 (+29d) | 2015-10-30 → 2015-11-30 (+31d) |  |  |
| 60 | Design external system collaboration mode | 2015-11-02 → 2015-12-01 (+29d) | 2015-11-13 → 2015-12-14 (+31d) |  |  |
| 61 | Implement external system collaboration mode | 2015-11-16 → 2015-12-15 (+29d) | 2015-12-11 → 2016-01-11 (+31d) |  |  |
| 62 | Extend unknown phrases and concepts handling | 2015-12-14 → 2016-01-12 (+29d) | 2015-12-18 → 2016-01-18 (+31d) |  |  |
| 63 | **Time control extension** | 2015-12-21 → 2016-01-19 (+29d) | 2016-01-12 → 2016-02-10 (+29d) |  |  |
| 64 | Design time control critic | 2015-12-21 → 2016-01-19 (+29d) | 2015-12-22 → 2016-01-20 (+29d) |  |  |
| 65 | Implement and test time control critic | 2015-12-23 → 2016-01-21 (+29d) | 2016-01-12 → 2016-02-10 (+29d) |  |  |
| 66 | Knowledge base creation and training | 2016-01-13 → 2016-02-11 (+29d) | 2016-02-09 → 2016-03-09 (+29d) |  |  |
| 67 | TU Cog project end2 | 2016-02-10 → 2016-03-10 (+29d) | 2016-02-10 → 2016-03-10 (+29d) |  |  |
