# TU Instinctive

How a schedule from GanttProject changed from version to version. A marks actual dates.

## Version 1 (saved 2013-09-26)

Note of the change: Crated TU Instinctive man-days diagram

| ID | WBS | Task | Duration | Start | Finish | Predecessors |
| --- | --- | --- | --- | --- | --- | --- |
| 1 |  | Start project | 0d | 2014-01-15 | 2014-01-15 |  |
| 2 | 2 | **TU Instinctive** | 483d | 2014-01-15 | 2015-11-20 |  |
| 3 | 2.1 | **Preliminary development** | 51d | 2014-01-15 | 2014-03-26 | 1 |
| 4 |  | Version 1.0 bugs | 15d | 2014-01-15 | 2014-02-04 |  |
| 5 |  | Version 1.0 improvements | 14d | 2014-02-05 | 2014-02-24 | 4 |
| 6 |  | Version 1.0 Fixes | 0d | 2014-02-25 | 2014-02-25 | 4, 5 |
| 7 |  | Refactor to get rid of KBAdapter addressing | 2d | 2014-02-25 | 2014-02-26 | 6 |
| 8 |  | Test and debug | 2d | 2014-02-27 | 2014-02-28 | 7 |
| 9 |  | Refactor model | 10d | 2014-03-03 | 2014-03-14 | 8 |
| 10 |  | Test and debug | 3d | 2014-03-17 | 2014-03-19 | 9 |
| 11 |  | HowTo training | 2d | 2014-03-20 | 2014-03-21 | 10 |
| 12 |  | Test and debug | 3d | 2014-03-24 | 2014-03-26 | 11 |
| 13 | 2.2 | **Thinking model** | 79d | 2014-03-27 | 2014-07-15 | 3 |
| 14 |  | 6 thinking levels design | 5d | 2014-03-27 | 2014-04-02 |  |
| 15 |  | 6 thinking levels implementation | 10d | 2014-04-03 | 2014-04-16 | 14 |
| 16 |  | Test and debug | 10d | 2014-04-17 | 2014-04-30 | 15 |
| 17 |  | Integration | 10d | 2014-05-01 | 2014-05-14 | 16 |
| 18 |  | Time concept | 3d | 2014-05-15 | 2014-05-19 | 17 |
| 19 |  | Personality manager | 10d | 2014-05-20 | 2014-06-02 | 18 |
| 20 |  | Test and debug | 10d | 2014-06-03 | 2014-06-16 | 19 |
| 21 |  | Instinctive level | 3d | 2014-06-17 | 2014-06-19 | 20 |
| 22 |  | Test and debug | 1d | 2014-06-20 | 2014-06-20 | 21 |
| 23 |  | Integration | 7d | 2014-06-23 | 2014-07-01 | 22 |
| 24 |  | Test and debug | 10d | 2014-07-02 | 2014-07-15 | 23 |
| 25 |  | Thinking model end | 0d | 2014-07-16 | 2014-07-16 | 24 |
| 26 | 2.3 | **Analyser** | 71d | 2014-07-16 | 2014-10-22 | 13 |
| 27 |  | JNI PLN | 15d | 2014-07-16 | 2014-08-05 |  |
| 28 |  | Test and debug | 15d | 2014-08-06 | 2014-08-26 | 27 |
| 29 |  | Inductive reasoning | 7d | 2014-08-27 | 2014-09-04 | 28 |
| 30 |  | Test and debug | 3d | 2014-09-05 | 2014-09-09 | 29 |
| 31 |  | Deductive reasoning | 6d | 2014-09-10 | 2014-09-17 | 30 |
| 32 |  | Test and bebug | 3d | 2014-09-18 | 2014-09-22 | 31 |
| 33 |  | Abductive reasoning | 8d | 2014-09-23 | 2014-10-02 | 32 |
| 34 |  | Test and debug | 4d | 2014-10-03 | 2014-10-08 | 33 |
| 35 |  | Integration | 7d | 2014-10-09 | 2014-10-17 | 34 |
| 36 |  | Testing | 3d | 2014-10-20 | 2014-10-22 | 35 |
| 37 |  | Analyser end | 0d | 2014-10-23 | 2014-10-23 | 36 |
| 38 | 2.4 | **Actuator** | 77d | 2014-10-23 | 2015-02-06 | 26 |
| 39 |  | Smart actuator | 10d | 2014-10-23 | 2014-11-05 | 10 |
| 40 |  | Test and debug | 10d | 2014-11-06 | 2014-11-19 | 39 |
| 41 |  | Smart feedback analyser | 15d | 2014-11-20 | 2014-12-10 | 40 |
| 42 |  | Test and debug | 7d | 2014-12-11 | 2014-12-19 | 41 |
| 43 |  | Smart reporter | 10d | 2014-12-22 | 2015-01-02 | 42 |
| 44 |  | Test and debug | 10d | 2015-01-05 | 2015-01-16 | 43 |
| 45 |  | Testing | 15d | 2015-01-19 | 2015-02-06 | 44 |
| 46 |  | Smart actuator end | 0d | 2015-02-09 | 2015-02-09 | 45 |
| 47 | 2.5 | **Emotional thinking** | 110d | 2015-02-09 | 2015-07-10 | 38 |
| 48 |  | Apprisal theory analysis | 10d | 2015-02-09 | 2015-02-20 |  |
| 49 |  | Design | 20d | 2015-02-23 | 2015-03-20 | 48 |
| 50 |  | Implementation and testing | 80d | 2015-03-23 | 2015-07-10 | 49 |
| 51 | 2.6 | **Common sense reasoning** | 75d | 2015-07-13 | 2015-10-23 | 47 |
| 52 |  | Design | 15d | 2015-07-13 | 2015-07-31 |  |
| 53 |  | Implementation and testing | 60d | 2015-08-03 | 2015-10-23 | 52 |
| 54 |  | Knowledge base creation and training | 20d | 2015-10-26 | 2015-11-20 | 51 |
| 55 |  | TU Instinctive project end | 0d | 2015-11-23 | 2015-11-23 | 54 |

## Version 2 (saved 2013-09-26)

Note of the change: Updated man-days Gantts

Last finish 2015-11-23 → 2015-12-16 (+23d).

Added:

| ID | Task | Duration | Start | Finish | Predecessors |
| --- | --- | --- | --- | --- | --- |
| 54 | **Time control extension** | 17d | 2015-10-26 | 2015-11-17 | 51 |
| 55 | Design time control critic | 2d | 2015-10-26 | 2015-10-27 |  |
| 56 | Implement time control | 15d | 2015-10-28 | 2015-11-17 | 55 |

Changed:

| ID | Task | Start | Finish | Duration | Predecessors |
| --- | --- | --- | --- | --- | --- |
| 2 | **TU Instinctive** |  | 2015-11-20 → 2015-12-15 (+25d) | 483d → 500d |  |
| 57 | Knowledge base creation and training | 2015-10-26 → 2015-11-18 (+23d) | 2015-11-20 → 2015-12-15 (+25d) |  | 51 → 51, 54 |
| 58 | TU Instinctive project end | 2015-11-23 → 2015-12-16 (+23d) | 2015-11-23 → 2015-12-16 (+23d) |  |  |

## Version 3 (saved 2013-09-27)

Note of the change: Added knowledge to rules inferrer.

Last finish 2015-12-16 → 2016-02-04 (+50d).

Added:

| ID | Task | Duration | Start | Finish | Predecessors |
| --- | --- | --- | --- | --- | --- |
| 36 | Knowledge to rules inferer design | 4d | 2014-10-20 | 2014-10-23 | 35 |
| 37 | Knowledge to logical rules Inferer | 7d | 2014-10-24 | 2014-11-03 | 36 |
| 38 | Test and debug | 7d | 2014-11-04 | 2014-11-12 | 37 |
| 39 | Integration | 3d | 2014-11-13 | 2014-11-17 | 38 |
| 61 | Test and debug | 15d | 2015-12-17 | 2016-01-06 | 60 |

Changed:

| ID | Task | Start | Finish | Duration | Predecessors |
| --- | --- | --- | --- | --- | --- |
| 2 | **TU Instinctive** |  | 2015-12-15 → 2016-02-03 (+50d) | 500d → 536d |  |
| 26 | **Analyser** |  | 2014-10-22 → 2014-11-20 (+29d) | 71d → 92d |  |
| 40 | Testing | 2014-10-20 → 2014-11-18 (+29d) | 2014-10-22 → 2014-11-20 (+29d) |  | 35 → 35, 39 |
| 41 | Analyser end | 2014-10-23 → 2014-11-21 (+29d) | 2014-10-23 → 2014-11-21 (+29d) |  |  |
| 42 | **Actuator** | 2014-10-23 → 2014-11-21 (+29d) | 2015-02-06 → 2015-03-09 (+31d) |  |  |
| 43 | Smart actuator | 2014-10-23 → 2014-11-21 (+29d) | 2014-11-05 → 2014-12-04 (+29d) |  |  |
| 44 | Test and debug | 2014-11-06 → 2014-12-05 (+29d) | 2014-11-19 → 2014-12-18 (+29d) |  |  |
| 45 | Smart feedback analyser | 2014-11-20 → 2014-12-19 (+29d) | 2014-12-10 → 2015-01-08 (+29d) |  |  |
| 46 | Test and debug | 2014-12-11 → 2015-01-09 (+29d) | 2014-12-19 → 2015-01-19 (+31d) |  |  |
| 47 | Smart reporter | 2014-12-22 → 2015-01-20 (+29d) | 2015-01-02 → 2015-02-02 (+31d) |  |  |
| 48 | Test and debug | 2015-01-05 → 2015-02-03 (+29d) | 2015-01-16 → 2015-02-16 (+31d) |  |  |
| 49 | Testing | 2015-01-19 → 2015-02-17 (+29d) | 2015-02-06 → 2015-03-09 (+31d) |  |  |
| 50 | Smart actuator end | 2015-02-09 → 2015-03-10 (+29d) | 2015-02-09 → 2015-03-10 (+29d) |  |  |
| 51 | **Emotional thinking** | 2015-02-09 → 2015-03-10 (+29d) | 2015-07-10 → 2015-08-10 (+31d) |  |  |
| 52 | Apprisal theory analysis | 2015-02-09 → 2015-03-10 (+29d) | 2015-02-20 → 2015-03-23 (+31d) |  |  |
| 53 | Design | 2015-02-23 → 2015-03-24 (+29d) | 2015-03-20 → 2015-04-20 (+31d) |  |  |
| 54 | Implementation and testing | 2015-03-23 → 2015-04-21 (+29d) | 2015-07-10 → 2015-08-10 (+31d) |  |  |
| 55 | **Common sense reasoning** | 2015-07-13 → 2015-08-11 (+29d) | 2015-10-23 → 2015-11-23 (+31d) |  |  |
| 56 | Design | 2015-07-13 → 2015-08-11 (+29d) | 2015-07-31 → 2015-08-31 (+31d) |  |  |
| 57 | Implementation and testing | 2015-08-03 → 2015-09-01 (+29d) | 2015-10-23 → 2015-11-23 (+31d) |  |  |
| 58 | **Time control extension** | 2015-10-26 → 2015-11-24 (+29d) | 2015-11-17 → 2016-01-06 (+50d) | 17d → 32d |  |
| 59 | Design time control critic | 2015-10-26 → 2015-11-24 (+29d) | 2015-10-27 → 2015-11-25 (+29d) |  |  |
| 60 | Implement time control | 2015-10-28 → 2015-11-26 (+29d) | 2015-11-17 → 2015-12-16 (+29d) |  |  |
| 62 | Knowledge base creation and training | 2015-11-18 → 2016-01-07 (+50d) | 2015-12-15 → 2016-02-03 (+50d) |  |  |
| 63 | TU Instinctive project end | 2015-12-16 → 2016-02-04 (+50d) | 2015-12-16 → 2016-02-04 (+50d) |  |  |

## Version 4 (saved 2017-08-26)

Note of the change: Pandora product: corrected project plan 2018

Last finish 2016-02-04 → 2020-02-04 (+1461d).

Changed:

| ID | Task | Start | Finish |
| --- | --- | --- | --- |
| 1 | Start project | 2014-01-15 → 2018-01-15 (+1461d) | 2014-01-15 → 2018-01-15 (+1461d) |
| 2 | **TU Instinctive** | 2014-01-15 → 2018-01-15 (+1461d) | 2016-02-03 → 2020-02-03 (+1461d) |
| 3 | **Preliminary development** | 2014-01-15 → 2018-01-15 (+1461d) | 2014-03-26 → 2018-03-26 (+1461d) |
| 4 | Version 1.0 bugs | 2014-01-15 → 2018-01-15 (+1461d) | 2014-02-04 → 2018-02-02 (+1459d) |
| 5 | Version 1.0 improvements | 2014-02-05 → 2018-02-05 (+1461d) | 2014-02-24 → 2018-02-22 (+1459d) |
| 6 | Version 1.0 Fixes | 2014-02-25 → 2018-02-23 (+1459d) | 2014-02-25 → 2018-02-23 (+1459d) |
| 7 | Refactor to get rid of KBAdapter addressing | 2014-02-25 → 2018-02-23 (+1459d) | 2014-02-26 → 2018-02-26 (+1461d) |
| 8 | Test and debug | 2014-02-27 → 2018-02-27 (+1461d) | 2014-02-28 → 2018-02-28 (+1461d) |
| 9 | Refactor model | 2014-03-03 → 2018-03-01 (+1459d) | 2014-03-14 → 2018-03-14 (+1461d) |
| 10 | Test and debug | 2014-03-17 → 2018-03-15 (+1459d) | 2014-03-19 → 2018-03-19 (+1461d) |
| 11 | HowTo training | 2014-03-20 → 2018-03-20 (+1461d) | 2014-03-21 → 2018-03-21 (+1461d) |
| 12 | Test and debug | 2014-03-24 → 2018-03-22 (+1459d) | 2014-03-26 → 2018-03-26 (+1461d) |
| 13 | **Thinking model** | 2014-03-27 → 2018-03-27 (+1461d) | 2014-07-15 → 2018-07-13 (+1459d) |
| 14 | 6 thinking levels design | 2014-03-27 → 2018-03-27 (+1461d) | 2014-04-02 → 2018-04-02 (+1461d) |
| 15 | 6 thinking levels implementation | 2014-04-03 → 2018-04-03 (+1461d) | 2014-04-16 → 2018-04-16 (+1461d) |
| 16 | Test and debug | 2014-04-17 → 2018-04-17 (+1461d) | 2014-04-30 → 2018-04-30 (+1461d) |
| 17 | Integration | 2014-05-01 → 2018-05-01 (+1461d) | 2014-05-14 → 2018-05-14 (+1461d) |
| 18 | Time concept | 2014-05-15 → 2018-05-15 (+1461d) | 2014-05-19 → 2018-05-17 (+1459d) |
| 19 | Personality manager | 2014-05-20 → 2018-05-18 (+1459d) | 2014-06-02 → 2018-05-31 (+1459d) |
| 20 | Test and debug | 2014-06-03 → 2018-06-01 (+1459d) | 2014-06-16 → 2018-06-14 (+1459d) |
| 21 | Instinctive level | 2014-06-17 → 2018-06-15 (+1459d) | 2014-06-19 → 2018-06-19 (+1461d) |
| 22 | Test and debug | 2014-06-20 → 2018-06-20 (+1461d) | 2014-06-20 → 2018-06-20 (+1461d) |
| 23 | Integration | 2014-06-23 → 2018-06-21 (+1459d) | 2014-07-01 → 2018-06-29 (+1459d) |
| 24 | Test and debug | 2014-07-02 → 2018-07-02 (+1461d) | 2014-07-15 → 2018-07-13 (+1459d) |
| 25 | Thinking model end | 2014-07-16 → 2018-07-16 (+1461d) | 2014-07-16 → 2018-07-16 (+1461d) |
| 26 | **Analyser** | 2014-07-16 → 2018-07-16 (+1461d) | 2014-11-20 → 2018-11-20 (+1461d) |
| 27 | JNI PLN | 2014-07-16 → 2018-07-16 (+1461d) | 2014-08-05 → 2018-08-03 (+1459d) |
| 28 | Test and debug | 2014-08-06 → 2018-08-06 (+1461d) | 2014-08-26 → 2018-08-24 (+1459d) |
| 29 | Inductive reasoning | 2014-08-27 → 2018-08-27 (+1461d) | 2014-09-04 → 2018-09-04 (+1461d) |
| 30 | Test and debug | 2014-09-05 → 2018-09-05 (+1461d) | 2014-09-09 → 2018-09-07 (+1459d) |
| 31 | Deductive reasoning | 2014-09-10 → 2018-09-10 (+1461d) | 2014-09-17 → 2018-09-17 (+1461d) |
| 32 | Test and bebug | 2014-09-18 → 2018-09-18 (+1461d) | 2014-09-22 → 2018-09-20 (+1459d) |
| 33 | Abductive reasoning | 2014-09-23 → 2018-09-21 (+1459d) | 2014-10-02 → 2018-10-02 (+1461d) |
| 34 | Test and debug | 2014-10-03 → 2018-10-03 (+1461d) | 2014-10-08 → 2018-10-08 (+1461d) |
| 35 | Integration | 2014-10-09 → 2018-10-09 (+1461d) | 2014-10-17 → 2018-10-17 (+1461d) |
| 36 | Knowledge to rules inferer design | 2014-10-20 → 2018-10-18 (+1459d) | 2014-10-23 → 2018-10-23 (+1461d) |
| 37 | Knowledge to logical rules Inferer | 2014-10-24 → 2018-10-24 (+1461d) | 2014-11-03 → 2018-11-01 (+1459d) |
| 38 | Test and debug | 2014-11-04 → 2018-11-02 (+1459d) | 2014-11-12 → 2018-11-12 (+1461d) |
| 39 | Integration | 2014-11-13 → 2018-11-13 (+1461d) | 2014-11-17 → 2018-11-15 (+1459d) |
| 40 | Testing | 2014-11-18 → 2018-11-16 (+1459d) | 2014-11-20 → 2018-11-20 (+1461d) |
| 41 | Analyser end | 2014-11-21 → 2018-11-21 (+1461d) | 2014-11-21 → 2018-11-21 (+1461d) |
| 42 | **Actuator** | 2014-11-21 → 2018-11-21 (+1461d) | 2015-03-09 → 2019-03-07 (+1459d) |
| 43 | Smart actuator | 2014-11-21 → 2018-11-21 (+1461d) | 2014-12-04 → 2018-12-04 (+1461d) |
| 44 | Test and debug | 2014-12-05 → 2018-12-05 (+1461d) | 2014-12-18 → 2018-12-18 (+1461d) |
| 45 | Smart feedback analyser | 2014-12-19 → 2018-12-19 (+1461d) | 2015-01-08 → 2019-01-08 (+1461d) |
| 46 | Test and debug | 2015-01-09 → 2019-01-09 (+1461d) | 2015-01-19 → 2019-01-17 (+1459d) |
| 47 | Smart reporter | 2015-01-20 → 2019-01-18 (+1459d) | 2015-02-02 → 2019-01-31 (+1459d) |
| 48 | Test and debug | 2015-02-03 → 2019-02-01 (+1459d) | 2015-02-16 → 2019-02-14 (+1459d) |
| 49 | Testing | 2015-02-17 → 2019-02-15 (+1459d) | 2015-03-09 → 2019-03-07 (+1459d) |
| 50 | Smart actuator end | 2015-03-10 → 2019-03-08 (+1459d) | 2015-03-10 → 2019-03-08 (+1459d) |
| 51 | **Emotional thinking** | 2015-03-10 → 2019-03-08 (+1459d) | 2015-08-10 → 2019-08-08 (+1459d) |
| 52 | Apprisal theory analysis | 2015-03-10 → 2019-03-08 (+1459d) | 2015-03-23 → 2019-03-21 (+1459d) |
| 53 | Design | 2015-03-24 → 2019-03-22 (+1459d) | 2015-04-20 → 2019-04-18 (+1459d) |
| 54 | Implementation and testing | 2015-04-21 → 2019-04-19 (+1459d) | 2015-08-10 → 2019-08-08 (+1459d) |
| 55 | **Common sense reasoning** | 2015-08-11 → 2019-08-09 (+1459d) | 2015-11-23 → 2019-11-21 (+1459d) |
| 56 | Design | 2015-08-11 → 2019-08-09 (+1459d) | 2015-08-31 → 2019-08-29 (+1459d) |
| 57 | Implementation and testing | 2015-09-01 → 2019-08-30 (+1459d) | 2015-11-23 → 2019-11-21 (+1459d) |
| 58 | **Time control extension** | 2015-11-24 → 2019-11-22 (+1459d) | 2016-01-06 → 2020-01-06 (+1461d) |
| 59 | Design time control critic | 2015-11-24 → 2019-11-22 (+1459d) | 2015-11-25 → 2019-11-25 (+1461d) |
| 60 | Implement time control | 2015-11-26 → 2019-11-26 (+1461d) | 2015-12-16 → 2019-12-16 (+1461d) |
| 61 | Test and debug | 2015-12-17 → 2019-12-17 (+1461d) | 2016-01-06 → 2020-01-06 (+1461d) |
| 62 | Knowledge base creation and training | 2016-01-07 → 2020-01-07 (+1461d) | 2016-02-03 → 2020-02-03 (+1461d) |
| 63 | TU Instinctive project end | 2016-02-04 → 2020-02-04 (+1461d) | 2016-02-04 → 2020-02-04 (+1461d) |
