# Menta 0.3 research

How a schedule from GanttProject changed from version to version. A marks actual dates.

## Version 1 (saved 2012-05-29)

Note of the change: Code upload.

| ID | WBS | Task | Duration | Start | Finish | Predecessors |
| --- | --- | --- | --- | --- | --- | --- |
| 1 | 1 | **Analysis** | 11d | 2012-01-16 | 2012-01-30 |  |
| 2 |  | Incidents | 5d | 2012-01-16 | 2012-01-20 |  |
| 3 |  | Workbook articles | 6d | 2012-01-23 | 2012-01-30 | 2 |
| 4 | 2 | **Design Emotion Machine** | 38d | 2012-01-23 | 2012-03-14 |  |
| 5 |  | Inbound textual description | 1d | 2012-01-23 | 2012-01-23 |  |
| 6 |  | Internal knowledge(atom) representations | 8d | 2012-01-23 | 2012-02-01 |  |
| 7 |  | Formalization outbound structures | 6d | 2012-02-02 | 2012-02-09 | 6 |
| 8 |  | Design Solution HowTo-s | 16d | 2012-01-24 | 2012-02-14 | 5 |
| 9 |  | Design Critics | 12d | 2012-02-10 | 2012-02-27 | 7 |
| 10 |  | Design Selector | 12d | 2012-02-15 | 2012-03-01 | 8 |
| 11 |  | Design Way2Think | 12d | 2012-02-28 | 2012-03-14 | 9 |
| 12 |  | Analysis and design | 0d | 2012-03-15 | 2012-03-15 | 1, 4 |
| 13 | 4 | **OpenCog prototype** | 31d | 2012-01-31 | 2012-03-13 | 1 |
| 14 | 4.1 | **CogBuntu** | 3d | 2012-01-31 | 2012-02-02 |  |
| 15 |  | Red documentation | 1d | 2012-01-31 | 2012-01-31 |  |
| 16 |  | Install CogBuntu | 2d | 2012-02-01 | 2012-02-02 | 15 |
| 17 | 4.2 | **AtomSpace Analysis** | 22d | 2012-02-03 | 2012-03-05 | 14 |
| 18 |  | Read documentation | 2d | 2012-02-03 | 2012-02-06 |  |
| 19 |  | Test storage using Cookbook | 4d | 2012-02-07 | 2012-02-10 | 18 |
| 20 |  | Test storage usability for knowledge representation | 16d | 2012-02-13 | 2012-03-05 | 19 |
| 21 | 4.3 | **Probability Logic Engines analysis** | 22d | 2012-02-03 | 2012-03-05 | 14 |
| 22 | 4.3.1 | **PLN analysis** | 6d | 2012-02-03 | 2012-02-10 |  |
| 23 |  | Read documentation | 2d | 2012-02-03 | 2012-02-06 |  |
| 24 |  | Test PLN using NARS data | 4d | 2012-02-07 | 2012-02-10 | 23 |
| 25 |  | Bayesian inference | 16d | 2012-02-13 | 2012-03-05 | 24 |
| 26 | 4.4 | **Embodiment** | 28d | 2012-02-03 | 2012-03-13 | 1, 14 |
| 27 |  | Read documentation | 8d | 2012-02-03 | 2012-02-14 |  |
| 28 |  | Test embodiment system to simulate Intellix | 20d | 2012-02-15 | 2012-03-13 | 27 |
| 29 | 4.5 | **Natural language processors** | 18d | 2012-02-03 | 2012-02-28 | 14 |
| 30 |  | RelEx | 8d | 2012-02-03 | 2012-02-14 |  |
| 31 |  | Stanford Parser | 4d | 2012-02-15 | 2012-02-20 | 30 |
| 32 |  | OpenNLP | 6d | 2012-02-21 | 2012-02-28 | 31 |
| 33 |  | OpenCog analysis | 0d | 2012-03-14 | 2012-03-14 | 13 |
| 34 | 6 | **System Training prototype** | 60d | 2012-02-29 | 2012-05-22 | 14 |
| 35 |  | MOSES | 18d | 2012-02-29 | 2012-03-23 | 29 |
| 36 |  | Bayesian network | 16d | 2012-03-06 | 2012-03-27 | 17 |
| 37 | 6.3 | **Training** | 19d | 2012-03-02 | 2012-03-28 |  |
| 38 | 6.3.1 | **Training data structures** | 19d | 2012-03-02 | 2012-03-28 |  |
| 39 |  | Incident description | 1d | 2012-03-02 | 2012-03-02 | 10 |
| 40 |  | Incident category | 1d | 2012-03-05 | 2012-03-05 | 39 |
| 41 | 6.3.1.3 | **Incident formalized description** | 10d | 2012-03-15 | 2012-03-28 | 11 |
| 42 |  | Model | 10d | 2012-03-15 | 2012-03-28 | 11 |
| 43 |  | Incident solution(Migrate HowTo approach | 10d | 2012-03-06 | 2012-03-19 | 40 |
| 44 | 6.4 | **Create formalized description generalisation mechanism** | 38d | 2012-03-06 | 2012-04-26 |  |
| 45 | 6.4.1 | **Create common parts selector and variable introducer** | 38d | 2012-03-06 | 2012-04-26 |  |
| 46 |  | Comparator | 6d | 2012-03-06 | 2012-03-13 | 21 |
| 47 |  | Recursive runner | 8d | 2012-03-14 | 2012-03-23 | 46 |
| 48 | 6.4.1.3 | **Variable introducer** | 21d | 2012-03-29 | 2012-04-26 |  |
| 49 |  | Design variable structure | 4d | 2012-03-29 | 2012-04-03 | 42 |
| 50 |  | Implement and test variable | 8d | 2012-04-04 | 2012-04-13 | 49 |
| 51 |  | Named variables builder | 8d | 2012-04-16 | 2012-04-25 | 50 |
| 52 |  | Unnamed variables builder | 8d | 2012-04-17 | 2012-04-26 | 63 |
| 53 | 6.5 | **Incident classification algorithm** | 16d | 2012-03-14 | 2012-04-04 |  |
| 54 | 6.5.1 | **Create test data for KnowledgeBaseAnnotator** | 16d | 2012-03-14 | 2012-04-04 |  |
| 55 |  | Allowed Software list | 6d | 2012-03-14 | 2012-03-21 | 26 |
| 56 |  | Over software actions | 4d | 2012-03-26 | 2012-03-29 | 35 |
| 57 |  | Software attributes | 8d | 2012-03-26 | 2012-04-04 | 47 |
| 58 |  | Software states | 4d | 2012-03-20 | 2012-03-23 | 43 |
| 59 | 6.6 | **Create validation criteria inference approach** | 46d | 2012-03-20 | 2012-05-22 |  |
| 60 |  | Analyse validation criteria types | 10d | 2012-03-22 | 2012-04-04 | 55 |
| 61 |  | Create descriptions via predicates (logical operations) | 14d | 2012-03-20 | 2012-04-06 | 43 |
| 62 | 6.6.3 | **Create validation mechanism possibly via PLN** | 12d | 2012-03-30 | 2012-04-16 |  |
| 63 |  | Design adapter | 8d | 2012-04-05 | 2012-04-16 | 60 |
| 64 |  | Implement adapter | 12d | 2012-03-30 | 2012-04-16 | 56 |
| 65 | 6.6.4 | **Create Solution generation prototype** | 32d | 2012-04-09 | 2012-05-22 |  |
| 66 |  | HowTo types = 16 - 40 | 16d | 2012-04-09 | 2012-04-30 | 61 |
| 67 |  | Solution description language = 32 - 40 | 32d | 2012-04-09 | 2012-05-22 | 61 |
| 68 |  | Create 10 Solution descriptions = 16 - 32 | 16d | 2012-04-17 | 2012-05-08 | 64 |
| 69 | 6.6.4.4 | **Train Solutions** | 23d | 2012-04-17 | 2012-05-17 |  |
| 70 |  | Analyse machine learning algorithms (C 4.5, Bayes network) = 16 - 24 | 16d | 2012-04-17 | 2012-05-08 | 64 |

| ID | WBS | Task | Duration | Start | Finish | Predecessors |
| --- | --- | --- | --- | --- | --- | --- |
| 71 |  | Train 10 Solutions (in: formalised problem description, out Solution) = 16 - 24 | 16d | 2012-04-26 | 2012-05-17 | 51 |
| 72 |  | Training prototype milestone | 0d | 2012-05-23 | 2012-05-23 | 34 |
| 73 | 8 | **AIV Solution, for the specification see page.** | 36d | 2012-05-24 | 2012-07-12 | 72 |
| 74 | 8.1 | **Auto-correct analysis should use measures: precision, recall and F-measure** | 6d | 2012-06-29 | 2012-07-06 |  |
| 75 | 8.1.1 | **AbiWord** | 6d | 2012-05-24 | 2012-05-31 |  |
| 76 |  | Read Syntax check module documentation = 1 | 1d | 2012-05-24 | 2012-05-24 |  |
| 77 |  | Install AbiWord = 1 - 2 | 1d | 2012-05-25 | 2012-05-25 | 76 |
| 78 |  | Test 10 incidents descriptions = 3.5 - 4 | 4d | 2012-05-28 | 2012-05-31 | 77 |
| 79 | 8.1.2 | **OpenOffice(LibreOffice)** | 6d | 2012-05-24 | 2012-05-31 |  |
| 80 |  | Read Auto-correct module documentation OpenOffice LibreOffice = 1 | 1d | 2012-05-24 | 2012-05-24 |  |
| 81 |  | Install OpenOffice or LibreOffice = 1 - 2 | 1d | 2012-05-25 | 2012-05-25 | 80 |
| 82 |  | Test 10 incidents descriptions = 3.5 - 4 | 4d | 2012-05-28 | 2012-05-31 | 81 |
| 83 | 8.1.3 | **OpenCog** | 6d | 2012-05-24 | 2012-05-31 |  |
| 84 |  | Read Auto-correct module documentation Grammatical correction = 1 - 2 | 1d | 2012-05-24 | 2012-05-24 |  |
| 85 |  | Install OpenCog = 1 - 2 | 1d | 2012-05-25 | 2012-05-25 | 84 |
| 86 |  | Test 10 incidents descriptions = 3.5 - 4 | 4d | 2012-05-28 | 2012-05-31 | 85 |
| 87 | 8.1.4 | **KOffice** | 6d | 2012-05-24 | 2012-05-31 |  |
| 88 |  | Read Auto-correct module documentation = 1 - 2 | 1d | 2012-05-24 | 2012-05-24 |  |
| 89 |  | Install KOffice = 1 - 4 [Could be not strait forward under Win] | 1d | 2012-05-25 | 2012-05-25 | 88 |
| 90 |  | Test 10 incidents descriptions = 3.5 - 4 | 4d | 2012-05-28 | 2012-05-31 | 89 |
| 91 | 8.2 | **KnowledgeBaseAnnotator, see specification. knowledge base integration analysis.** | 36d | 2012-05-24 | 2012-07-12 |  |
| 92 | 8.2.1 | **WolframAlpha** | 30d | 2012-05-24 | 2012-07-04 |  |
| 93 |  | Explore API to integrate = 10 - 20 [could be not strait forward] | 10d | 2012-05-24 | 2012-06-06 |  |
| 94 |  | Test information retrieval and annotation options = 20 - 30 [could contain information not from SE domain] | 20d | 2012-06-07 | 2012-07-04 | 93 |
| 95 | 8.2.2 | **TrueKnowledge** | 30d | 2012-05-24 | 2012-07-04 |  |
| 96 |  | Explore API to integrate = 10 - 20 [could be not strait forward] | 10d | 2012-05-24 | 2012-06-06 |  |
| 97 |  | Test information retrieval and annotation options = 20 - 30 [could contain information not from SE domain] | 20d | 2012-06-07 | 2012-07-04 | 96 |
| 98 | 8.2.3 | **ConceptNet** | 30d | 2012-06-01 | 2012-07-12 |  |
| 99 |  | Explore API to integrate = 10 - 20 [could be not strait forward] | 10d | 2012-06-01 | 2012-06-14 | 78 |
| 100 |  | Test information retrieval and annotation options = 20 - 30 [could contain information not from SE domain] | 20d | 2012-06-15 | 2012-07-12 | 99 |
| 101 | 8.2.4 | **ConceptNet5** | 30d | 2012-06-01 | 2012-07-12 |  |
| 102 |  | Explore API to integrate = 10 - 20 [could be not strait forward] | 10d | 2012-06-01 | 2012-06-14 | 82 |
| 103 |  | Test information retrieval and annotation options = 20 - 30 [could contain information not from SE domain] | 20d | 2012-06-15 | 2012-07-12 | 102 |
| 104 | 8.2.5 | **WordNet, is integrated in ConceptNet5 but could be useful standalone** | 30d | 2012-06-01 | 2012-07-12 |  |
| 105 |  | Explore API to integrate = 10 - 20 [could be not strait forward] | 10d | 2012-06-01 | 2012-06-14 | 86 |
| 106 |  | Test information retrieval and annotation options = 20 - 30 [could contain information not from SE domain] | 20d | 2012-06-15 | 2012-07-12 | 105 |
| 107 |  | AIV Solution | 0d | 2012-07-13 | 2012-07-13 | 73 |
| 108 | 10 | **Emotion Machine Soltion** | 36d | 2012-07-17 | 2012-09-04 | 107 |
| 109 | 10.1 | **Prototype Critics, Way2Think, Selector** | 14d | 2012-07-17 | 2012-08-03 |  |
| 110 | 10.1.1 | **Implement Critics** | 14d | 2012-07-17 | 2012-08-03 |  |
| 111 | 10.1.1.1 | **Deliberative Critics** | 8d | 2012-07-17 | 2012-07-26 |  |
| 112 |  | Current activity goal representation = 6 - 8 [possibly should try several approaches] | 6d | 2012-07-17 | 2012-07-24 |  |
| 113 |  | Current task state representation = 4 - 6 [possibly should try several representations] | 4d | 2012-07-17 | 2012-07-20 |  |
| 114 |  | Reasoning over current state with Reasoner adapter development = 8 - 10 | 8d | 2012-07-17 | 2012-07-26 |  |
| 115 | 10.1.1.2 | **Reflective Critic** | 6d | 2012-07-17 | 2012-07-24 |  |
| 116 | 10.1.1.2.1 | **Develop Energy control mechanism.** | 6d | 2012-07-17 | 2012-07-24 |  |
| 117 |  | Design Energy concept = 4 | 4d | 2012-07-17 | 2012-07-20 |  |
| 118 |  | Design Energy assignment mechanism during training = 2 | 2d | 2012-07-17 | 2012-07-18 |  |
| 119 |  | Implement Energy concept = 2 | 2d | 2012-07-23 | 2012-07-24 | 117 |
| 120 |  | Implement Energy assignment mechanism = 4 | 4d | 2012-07-19 | 2012-07-24 | 118 |
| 121 | 10.1.1.3 | **Develop Sub-goal control mechanism.** | 8d | 2012-07-23 | 2012-08-01 |  |
| 122 |  | Design sub-goal control mechanism = 4 | 4d | 2012-07-23 | 2012-07-26 | 113 |
| 123 |  | Implement sub-goal control mechanism = 4 | 4d | 2012-07-27 | 2012-08-01 | 122 |
| 124 | 10.1.1.4 | **Develop Evidence control mechanism.** | 8d | 2012-07-25 | 2012-08-03 |  |
| 125 |  | Design Evidence control mechanism = 4 - 10 [no clear understanding of evidence control mechanism, possibly further research required] | 4d | 2012-07-25 | 2012-07-30 | 112 |
| 126 |  | Implement Evidence control mechanism = 4 - 10 | 4d | 2012-07-31 | 2012-08-03 | 125 |
| 127 |  | Prototype Selector = 6 - 8 | 6d | 2012-07-23 | 2012-07-30 | 117 |
| 128 | 10.3 | **Prototype Way2Think** | 30d | 2012-07-25 | 2012-09-04 |  |
| 129 |  | Create base constructs(HowTo-s) = 2 - 4 | 2d | 2012-07-25 | 2012-07-26 | 119 |
| 130 |  | Knowing How (select from KB) = 4 - 8 | 4d | 2012-07-25 | 2012-07-30 | 120 |
| 131 |  | Extensive Search (search in KB) = 12 - 24 [graph search could be not strait-forward] | 12d | 2012-07-27 | 2012-08-13 | 129 |
| 132 |  | Reasoning by Analogy = 32 - 40 [graph analogy API could be not strait forward] | 11d | 2012-07-31 | 2012-08-14 | 114, 127 |
| 133 | 10.3.5 | **Divide and Conquer** | 24d | 2012-07-31 | 2012-08-31 |  |
| 134 | 10.3.5.1 | **Add analytical HowTo-s to basic set:** | 8d | 2012-07-31 | 2012-08-09 |  |
| 135 |  | Wrong software was installed = 4 | 4d | 2012-08-06 | 2012-08-09 | 126 |
| 136 |  | Two direct instructions in one incident description = 4 | 4d | 2012-07-31 | 2012-08-03 | 130 |
| 137 | 10.3.5.2 | **Add Interpretation mechanism over current state of the system** | 20d | 2012-08-06 | 2012-08-31 |  |
| 138 |  | Variable and current state addressing = 12 - 16 | 12d | 2012-08-06 | 2012-08-21 | 136 |
| 139 |  | Logical operation execution = 16 | 16d | 2012-08-10 | 2012-08-31 | 135 |
| 140 | 10.3.6 | **Simulation (build the model based on inbound information) =** | 16d | 2012-08-14 | 2012-09-04 |  |

| ID | WBS | Task | Duration | Start | Finish | Predecessors |
| --- | --- | --- | --- | --- | --- | --- |
| 141 |  | Search for concept in the KB. = 16 | 16d | 2012-08-14 | 2012-09-04 | 131 |
| 142 |  | Search for properties in KB. = 4 | 4d | 2012-08-15 | 2012-08-20 | 132 |
| 143 |  | Create connections of found concepts. = 2 | 2d | 2012-08-15 | 2012-08-16 | 132 |
| 144 |  | Support context. = 2 | 2d | 2012-08-22 | 2012-08-23 | 138 |
| 145 | 10.4 | **Test main perceiving workflow** | 5d | 2012-08-24 | 2012-08-30 |  |
| 146 |  | Prototype Main Workflow. = 10 - 14 [some not well tested bugs could slow down the development]{Models, Critics, Way2Think ready to use} | 5d | 2012-08-24 | 2012-08-30 | 143, 144 |
| 147 |  | Emotion machine solution | 0d | 2012-09-05 | 2012-09-05 | 108 |

## Version 2 (saved 2015-08-30)

Note of the change: corrected the IJSE article

Last finish stays 2012-09-05.

Changed:

| ID | Task | Start | Finish | Other |
| --- | --- | --- | --- | --- |
| 2 | Incidents |  |  | resources Renat; Alex [50%]; Artem; Adel [50%]; Bulat → Alex [50%]; Adel [50%]; Bulat; Renat; Artem |
| 3 | Workbook articles |  |  | resources Renat; Alex; Artem; Adel; Bulat → Alex; Adel; Bulat; Renat; Artem |
| 15 | Red documentation |  |  | resources Renat; Alex; Artem; Adel; Bulat → Alex; Adel; Bulat; Renat; Artem |
| 16 | Install CogBuntu |  |  | resources Renat; Alex; Artem; Adel; Bulat → Alex; Adel; Bulat; Renat; Artem |
| 64 | Implement adapter |  |  | resources Renat; Bulat → Bulat; Renat |
| 74 | **Auto-correct analysis should use measures: precision, recall and F-measure** | 2012-06-29 → 2012-05-24 (-36d) | 2012-07-06 → 2012-05-31 (-36d) |  |
| 132 | Reasoning by Analogy = 32 - 40 [graph analogy API could be not strait forward] |  |  | resources Alex; Artem; Adel → Alex; Adel; Artem |
